# 闲逛Recycle

Schedule from MS Project, 2020-03-02 to 2020-06-19, scheduled back from the finish, costs in ¥.
HP

## Calendars

- 标准: Mon-Fri 08:00-12:00, 13:00-17:00; Sat-Sun off.

## Resources

| Resource | Group | Rate |
| --- | --- | --- |
| 孙玲 | 项目经理 | 50 |
| UI专家 | UI专家 | 40 |
| 高新月 | 需求专家 | 40 |
| 张引硕 | 设计专家 | 40 |
| 蒋晓伟 | 质量专家 | 40 |
| 测试员1 | 测试员 | 40 |
| 测试员2 | 测试员 | 40 |
| 程序员1 | 程序员 | 50 |
| 程序员2 | 程序员 | 50 |
| 程序员3 | 程序员 | 50 |
| aa |  | 30 |

## Schedule

| ID | WBS | Task | Type | Duration | Start | Finish | Predecessors | Constraint | Resources | Work | Cost |
| --- | --- | --- | --- | --- | --- | --- | --- | --- | --- | --- | --- |
| 1 | 1 | **启动** |  | 5d | 2020-03-02 | 2020-03-06 |  | as late as possible |  | 104h | 4,560 |
| 2 | 1.1 | 组建核心团队 | manual | 1d | 2020-03-02 | 2020-03-02 |  |  | 孙玲; UI专家; 张引硕; 高新月; 蒋晓伟 | 40h | 1,680 |
| 3 | 1.2 | 干系人分析 | manual | 1d | 2020-03-03 | 2020-03-03 |  |  | 孙玲 | 8h | 400 |
| 4 | 1.3 | 里程碑计划 | manual | 1d | 2020-03-04 | 2020-03-04 |  |  | 孙玲 | 8h | 400 |
| 5 | 1.4 | 制定项目章程 | manual | 1d | 2020-03-05 | 2020-03-05 | 2, 3, 4 |  | 孙玲 | 8h | 400 |
| 6 | 1.5 | 项目启动大会 | manual | 1d | 2020-03-06 | 2020-03-06 | 5 |  | 孙玲; UI专家; 高新月; 张引硕; 蒋晓伟 | 40h | 1,680 |
| 7 | 2 | **规划** |  | 35d | 2020-03-09 | 2020-04-24 |  | as late as possible |  | 392h | 18,140 |
| 8 | 2.1 | **规划范围** |  | 11d | 2020-03-09 | 2020-03-23 |  | as late as possible |  | 136h | 5,980 |
| 9 | 2.1.1 | 制定需求说明书 | manual | 5d | 2020-03-09 | 2020-03-13 | 6 |  | 高新月 | 40h | 1,600 |
| 10 | 2.1.2 | 界面设计 | manual | 3d | 2020-03-16 | 2020-03-18 | 9 |  | UI专家; aa [200%] | 24h | 1,020 |
| 11 | 2.1.3 | 详细设计说明书 | manual | 3d | 2020-03-16 | 2020-03-18 | 9 |  | 张引硕 | 24h | 960 |
| 12 | 2.1.4 | 项目范围说明书 | manual | 3d | 2020-03-16 | 2020-03-18 | 9 |  | 孙玲 | 24h | 1,200 |
| 13 | 2.1.5 | 创建WBS | manual | 2d | 2020-03-19 | 2020-03-20 | 10, 11, 12 |  | 孙玲 | 16h | 800 |
| 14 | 2.1.6 | 形成范围基准 | manual | 1d | 2020-03-23 | 2020-03-23 | 13 |  | 孙玲 | 8h | 400 |
| 15 | 2.2 | **规划时间** |  | 6d | 2020-03-24 | 2020-03-31 |  | as late as possible |  | 48h | 2,400 |
| 16 | 2.2.1 | 排列工作包顺序 | manual | 1d | 2020-03-24 | 2020-03-24 | 14 |  | 孙玲 | 8h | 400 |
| 17 | 2.2.2 | 估算资源 | manual | 1d | 2020-03-25 | 2020-03-25 | 16 |  | 孙玲 | 8h | 400 |
| 18 | 2.2.3 | 估算持续时间 | manual | 2d | 2020-03-26 | 2020-03-27 | 17 |  | 孙玲 | 16h | 800 |
| 19 | 2.2.4 | 制定进度计划 | manual | 1d | 2020-03-30 | 2020-03-30 | 18 |  | 孙玲 | 8h | 400 |
| 20 | 2.2.5 | 形成进度基准 | manual | 1d | 2020-03-31 | 2020-03-31 | 19 |  | 孙玲 | 8h | 400 |
| 21 | 2.3 | **规划成本** |  | 5d | 2020-04-01 | 2020-04-07 |  | as late as possible |  | 40h | 2,000 |
| 22 | 2.3.1 | 项目成本估算 | manual | 2d | 2020-04-01 | 2020-04-02 | 20 |  | 孙玲 | 16h | 800 |
| 23 | 2.3.2 | 项目预算 | manual | 2d | 2020-04-03 | 2020-04-06 | 22 |  | 孙玲 | 16h | 800 |
| 24 | 2.3.3 | 形成范围基准 | manual | 1d | 2020-04-07 | 2020-04-07 | 23 |  | 孙玲 | 8h | 400 |

| ID | WBS | Task | Type | Duration | Start | Finish | Predecessors | Constraint | Resources | Work | Cost |
| --- | --- | --- | --- | --- | --- | --- | --- | --- | --- | --- | --- |
| 25 | 2.4 | **规划质量** |  | 8d | 2020-03-24 | 2020-04-02 |  | as late as possible |  | 64h | 2,560 |
| 26 | 2.4.1 | 制定测试计划 | manual | 2d | 2020-03-24 | 2020-03-25 | 14 |  | 蒋晓伟 | 16h | 640 |
| 27 | 2.4.2 | 制定测试用例 | manual | 6d | 2020-03-26 | 2020-04-02 | 26 |  | 蒋晓伟 | 48h | 1,920 |
| 28 | 2.5 | **规划人力资源** |  | 4d | 2020-04-08 | 2020-04-13 |  | as late as possible |  | 32h | 1,600 |
| 29 | 2.5.1 | 制定人力资源计划 | manual | 2d | 2020-04-08 | 2020-04-09 | 17 |  | 孙玲 | 16h | 800 |
| 30 | 2.5.2 | 制定人员配备管理计划 | manual | 2d | 2020-04-10 | 2020-04-13 | 29 |  | 孙玲 | 16h | 800 |
| 31 | 2.6 | **规划沟通** |  | 2d | 2020-04-14 | 2020-04-15 |  | as late as possible |  | 16h | 800 |
| 32 | 2.6.1 | 制定沟通管理计划 | manual | 2d | 2020-04-14 | 2020-04-15 | 30 |  | 孙玲 | 16h | 800 |
| 33 | 2.7 | **规划采购** |  | 3d | 2020-04-16 | 2020-04-20 |  | as late as possible |  | 24h | 1,200 |
| 34 | 2.7.1 | 自制外购分析 | manual | 1d | 2020-04-16 | 2020-04-16 | 17 |  | 孙玲 | 8h | 400 |
| 35 | 2.7.2 | 制定采购文件 | manual | 2d | 2020-04-17 | 2020-04-20 | 34 |  | 孙玲 | 16h | 800 |
| 36 | 2.8 | **规划风险** |  | 3d | 2020-04-21 | 2020-04-23 |  | as late as possible |  | 24h | 1,200 |
| 37 | 2.8.1 | 识别风险 | manual | 1d | 2020-04-21 | 2020-04-21 | 15, 21, 25, 28, 31, 33 |  | 孙玲 | 8h | 400 |
| 38 | 2.8.2 | 风险分析 | manual | 1d | 2020-04-22 | 2020-04-22 | 37 |  | 孙玲 | 8h | 400 |
| 39 | 2.8.3 | 制定风险登记册 | manual | 1d | 2020-04-23 | 2020-04-23 | 38 |  | 孙玲 | 8h | 400 |
| 40 | 2.9 | 规划整合 | manual | 1d | 2020-04-24 | 2020-04-24 | 39 |  | 孙玲 | 8h | 400 |
| 41 | 3 | **执行与监控** |  | 36d | 2020-04-27 | 2020-06-15 |  | as late as possible |  | 984h | 46,000 |
| 42 | 3.1 | 组建项目团队 | manual | 2d | 2020-04-27 | 2020-04-28 | 7 |  | 测试员1; 测试员2; 程序员1; 程序员2; 程序员3; 孙玲 | 96h | 4,480 |
| 43 | 3.2 | **项目执行** |  | 29d | 2020-04-29 | 2020-06-08 |  | as late as possible |  | 296h | 14,800 |
| 44 | 3.2.1 | **用户模块** |  | 29d | 2020-04-29 | 2020-06-08 |  | as late as possible |  | 224h | 11,200 |
| 45 | 3.2.1.1 | 注册登录 | manual | 3d | 2020-04-29 | 2020-05-01 | 42 |  | 程序员1 | 24h | 1,200 |
| 46 | 3.2.1.2 | 首页 | manual | 2d | 2020-05-05 | 2020-05-06 | 45 |  | 程序员1 | 16h | 800 |
| 47 | 3.2.1.3 | 浏览商品 | manual | 2d | 2020-05-07 | 2020-05-08 | 46 |  | 程序员1 | 16h | 800 |
| 48 | 3.2.1.4 | 搜索商品 | manual | 2d | 2020-05-11 | 2020-05-12 | 47 |  | 程序员1 | 16h | 800 |
| 49 | 3.2.1.5 | 购物车 | manual | 2d | 2020-05-13 | 2020-05-14 | 48 |  | 程序员1 | 16h | 800 |
| 50 | 3.2.1.6 | 下单 | manual | 2d | 2020-05-15 | 2020-05-18 | 49 |  | 程序员1 | 16h | 800 |
| 51 | 3.2.1.7 | 个人配置 | manual | 2d | 2020-05-19 | 2020-05-20 | 50 |  | 程序员1 | 16h | 800 |
| 52 | 3.2.1.8 | 我的 | manual | 2d | 2020-05-21 | 2020-05-22 | 51 |  | 程序员2 | 16h | 800 |
| 53 | 3.2.1.9 | 关于卖家 | manual | 2d | 2020-05-25 | 2020-05-26 | 52 |  | 程序员2 | 16h | 800 |
| 54 | 3.2.1.10 | 消息 | manual | 2d | 2020-05-27 | 2020-05-28 | 53 |  | 程序员2 | 16h | 800 |
| 55 | 3.2.1.11 | 卖闲置 | manual | 2d | 2020-05-29 | 2020-06-01 | 54 |  | 程序员2 | 16h | 800 |
| 56 | 3.2.1.12 | 商品管理 | manual | 2d | 2020-06-02 | 2020-06-03 | 55 |  | 程序员2 | 16h | 800 |
| 57 | 3.2.1.13 | 订单处理 | manual | 1d | 2020-06-04 | 2020-06-04 | 56 |  | 程序员2 | 8h | 400 |
| 58 | 3.2.1.14 | 统计 | manual | 2d | 2020-06-05 | 2020-06-08 | 57 |  | 程序员2 | 16h | 800 |

| ID | WBS | Task | Type | Duration | Start | Finish | Predecessors | Constraint | Resources | Work | Cost |
| --- | --- | --- | --- | --- | --- | --- | --- | --- | --- | --- | --- |
| 59 | 3.2.2 | **管理员模块** |  | 10d | 2020-04-29 | 2020-05-12 |  | as late as possible |  | 72h | 3,600 |
| 60 | 3.2.2.1 | 商家审核 | manual | 3d | 2020-04-29 | 2020-05-01 | 42 |  | 程序员3 | 24h | 1,200 |
| 61 | 3.2.2.2 | 促销活动 | manual | 2d | 2020-05-05 | 2020-05-06 | 60 |  | 程序员3 | 16h | 800 |
| 62 | 3.2.2.3 | 统计分析 | manual | 2d | 2020-05-07 | 2020-05-08 | 61 |  | 程序员3 | 16h | 800 |
| 63 | 3.2.2.4 | 备份 | manual | 2d | 2020-05-11 | 2020-05-12 | 62 |  | 程序员3 | 16h | 800 |
| 64 | 3.3 | **项目监控** |  | 4d | 2020-04-29 | 2020-05-04 |  | as late as possible |  | 168h | 7,280 |
| 65 | 3.3.1 | 各项指标监控 | manual | 1d | 2020-04-29 | 2020-04-29 | 42 |  | 测试员1; 测试员2; 孙玲 | 24h | 1,040 |
| 66 | 3.3.2 | 监控评审 | manual | 1d | 2020-04-30 | 2020-04-30 | 65 |  | 张引硕; 孙玲; 高新月; 蒋晓伟 | 32h | 1,360 |
| 67 | 3.3.3 | 变更评审 | manual | 1d | 2020-05-01 | 2020-05-01 | 66 |  | 张引硕; 孙玲; 高新月; 蒋晓伟 | 32h | 1,360 |
| 68 | 3.3.4 | 例会 | manual | 1d | 2020-05-04 | 2020-05-04 | 42 |  | UI专家; 测试员1; 测试员2; 程序员1; 程序员2; 程序员3; 张引硕; 孙玲; 高新月; 蒋晓伟 | 80h | 3,520 |
| 69 | 3.4 | **管理干系人** |  | 3d | 2020-05-05 | 2020-05-07 |  | as late as possible |  | 24h | 1,200 |
| 70 | 3.4.1 | 发布项目信息 | manual | 1d | 2020-05-05 | 2020-05-05 | 42 |  | 孙玲 | 8h | 400 |
| 71 | 3.4.2 | 报告监控指标 | manual | 1d | 2020-05-06 | 2020-05-06 | 42 |  | 孙玲 | 8h | 400 |
| 72 | 3.4.3 | 干系人沟通 | manual | 1d | 2020-05-07 | 2020-05-07 | 42 |  | 孙玲 | 8h | 400 |
| 73 | 3.5 | **团队建设** |  | 3d | 2020-06-10 | 2020-06-12 |  | as late as possible |  | 240h | 10,560 |
| 74 | 3.5.1 | 培训 | manual | 1d | 2020-06-10 | 2020-06-10 | 42 |  | UI专家; 测试员1; 测试员2; 程序员1; 程序员2; 程序员3; 张引硕; 孙玲; 高新月; 蒋晓伟 | 80h | 3,520 |
| 75 | 3.5.2 | 娱乐活动 | manual | 1d | 2020-06-11 | 2020-06-11 | 42 |  | UI专家; 测试员1; 测试员2; 程序员1; 程序员2; 程序员3; 张引硕; 孙玲; 高新月; 蒋晓伟 | 80h | 3,520 |
| 76 | 3.5.3 | 沟通 | manual | 1d | 2020-06-12 | 2020-06-12 | 42 |  | UI专家; 测试员1; 测试员2; 程序员1; 程序员2; 程序员3; 张引硕; 孙玲; 高新月; 蒋晓伟 | 80h | 3,520 |
| 77 | 3.6 | 采购 | manual | 15d | 2020-05-08 | 2020-05-28 | 42 |  | 孙玲 | 120h | 6,000 |
| 78 | 3.7 | 项目验收 | manual | 1d | 2020-06-15 | 2020-06-15 | 43 |  | UI专家; 张引硕; 孙玲; 高新月; 蒋晓伟 | 40h | 1,680 |
| 79 | 4 | **收尾** |  | 4d | 2020-06-16 | 2020-06-19 |  | as late as possible |  | 208h | 9,120 |
| 80 | 4.1 | 项目终验 | manual | 1d | 2020-06-16 | 2020-06-16 | 78 |  | UI专家; 张引硕; 孙玲; 高新月; 蒋晓伟 | 40h | 1,680 |
| 81 | 4.2 | 结束采购 | manual | 1d | 2020-06-17 | 2020-06-17 | 78 |  | 孙玲 | 8h | 400 |
| 82 | 4.3 | 项目内部收尾 | manual | 2d | 2020-06-18 | 2020-06-19 | 78 |  | UI专家; 测试员1; 测试员2; 程序员1; 程序员2; 程序员3; 张引硕; 孙玲; 高新月; 蒋晓伟 | 160h | 7,040 |
